# lab_01_task_01

How a schedule from MS Project changed from version to version. A marks actual dates.

## Version 1 (data date 2024-05-08, saved 2024-03-18, file task_01.mpp)

| ID | WBS | Task | Duration | Start | Finish | Predecessors | Complete | Total float | Constraint |
| --- | --- | --- | --- | --- | --- | --- | --- | --- | --- |
| 1 |  | Начало проекта | 0w | 2024-03-01 09:00 | 2024-03-01 09:00 |  |  | 0d |  |
| 2 | 2 | **Создание интерфейса** | 77.78d | 2024-03-01 09:00 A | 2024-06-27 16:15 | 1 | 38% | 0d |  |
| 3 | 2.1 | **Разработка дизайна интерфейса** | 25.62d | 2024-03-01 09:00 A | 2024-04-08 15:00 |  | 43% | 42.03d |  |
| 4 |  | Разработка 2D графических элементов | 3.77w | 2024-03-01 09:00 A | 2024-03-28 18:00 A |  | 100% |  |  |
| 5 |  | Разработка 3D графических элементов | 2w | 2024-03-01 09:00 | 2024-03-18 11:00 | 4SS |  | 42.03d |  |
| 6 |  | Создание заставки | 3w | 2024-03-18 11:00 | 2024-04-08 15:00 | 5 |  | 42.03d |  |
| 7 |  | Программирование интерфейса | 1.2w | 2024-06-19 16:15 | 2024-06-27 16:15 | 3, 12 |  | 0d |  |
| 8 | 3 | **Построение базы объектов** | 82.75d | 2024-03-01 09:00 | 2024-07-04 16:00 |  |  | 15.53d |  |
| 9 |  | Анализ и построение структуры базы объектов | 2w | 2024-03-01 09:00 | 2024-03-26 16:00 |  |  | 15.53d |  |
| 10 |  | Программирование средств обработки базы объектов | 1.2w | 2024-03-26 16:00 | 2024-04-03 16:00 | 9 |  | 15.53d |  |
| 11 |  | Наполнение базы объектов | 12w | 2024-04-03 16:00 | 2024-07-04 16:00 | 10 |  | 15.53d |  |
| 12 | 4 | **Создание ядра GIS** | 71.78d | 2024-03-01 09:00 | 2024-06-19 16:15 |  |  | 0d |  |
| 13 |  | Анализ и проектирование ядра | 5.35w | 2024-03-01 09:00 | 2024-04-18 11:00 |  |  | 0d |  |
| 14 |  | Создание модели ядра | 1.68w | 2024-04-18 11:00 | 2024-05-03 15:12 | 13 |  | 0d |  |
| 15 |  | Тестирование модели ядра | 0.2w | 2024-05-03 15:12 | 2024-05-06 15:12 | 14 |  | 0d |  |
| 16 |  | Создание рабочей версии ядра | 5.83w | 2024-05-06 15:12 | 2024-06-19 16:15 | 15 |  | 0d |  |
| 17 |  | Создание мультимедиа - наполнения | 6w | 2024-04-08 15:00 | 2024-05-28 11:00 | 3 |  | 42.03d |  |
| 18 |  | Создание справочной системы | 2w | 2024-07-09 10:15 | 2024-07-23 11:15 | 7 |  | 3d |  |
| 19 | 7 | **Создание руководства пользователя** | 17.25d | 2024-06-13 16:15 | 2024-07-09 09:15 | 7FS-10d |  | 0d |  |
| 20 |  | Разработка дизайна руководства | 1w | 2024-06-13 16:15 | 2024-06-20 16:15 |  |  | 0d |  |
| 21 |  | Написание руководства пользователя | 3w | 2024-06-17 16:15 | 2024-07-09 09:15 | 20SS+2d |  | 0d |  |
| 22 | 8 | **Создание web - сайта и поддержка** | 23.38d | 2024-06-17 16:15 | 2024-07-19 10:15 |  |  | 0d |  |
| 23 |  | Разработка структуры сайта | 1d | 2024-06-17 16:15 | 2024-06-18 16:15 | 21SS |  | 0d |  |
| 24 |  | Разработка дизайна сайта | 1.43w | 2024-06-18 16:15 | 2024-06-27 17:15 | 23 |  | 0d |  |
| 25 |  | Наполнение сайта | 3w | 2024-06-27 17:15 | 2024-07-19 10:15 | 24 |  | 0d |  |
| 26 |  | Тестирование сайта | 2.02w | 2024-07-12 10:15 | 2024-07-26 11:14 | 22FS-1w |  | 0d |  |
| 27 |  | Сдача сайта в эксплуатацию | 0w | 2024-07-26 11:14 | 2024-07-26 11:14 | 26 |  | 0d |  |
| 28 | 11 | **Совещание** | 93.12d | 2024-03-06 09:00 | 2024-07-24 10:00 |  |  | 0d |  |
| 29 |  | Совещание 1 | 1h | 2024-03-06 09:00 | 2024-03-06 10:00 |  |  |  | start no earlier than 2024-03-06 09:00 |
| 30 |  | Совещание 2 | 1h | 2024-03-13 09:00 | 2024-03-13 10:00 |  |  | 91.16d | start no earlier than 2024-03-13 09:00 |
| 31 |  | Совещание 3 | 1h | 2024-03-20 09:00 | 2024-03-20 10:00 |  |  |  | start no earlier than 2024-03-20 09:00 |
| 32 |  | Совещание 4 | 1h | 2024-03-27 09:00 | 2024-03-27 10:00 |  |  |  | start no earlier than 2024-03-27 09:00 |
| 33 |  | Совещание 5 | 1h | 2024-04-03 09:00 | 2024-04-03 10:00 |  |  |  | start no earlier than 2024-04-03 09:00 |
| 34 |  | Совещание 6 | 1h | 2024-04-10 09:00 | 2024-04-10 10:00 |  |  |  | start no earlier than 2024-04-10 09:00 |
| 35 |  | Совещание 7 | 1h | 2024-04-17 09:00 | 2024-04-17 10:00 |  |  |  | start no earlier than 2024-04-17 09:00 |
| 36 |  | Совещание 8 | 1h | 2024-04-24 09:00 | 2024-04-24 10:00 |  |  |  | start no earlier than 2024-04-24 09:00 |
| 37 |  | Совещание 10 | 1h | 2024-05-08 09:00 | 2024-05-08 10:00 |  |  |  | start no earlier than 2024-05-08 09:00 |
| 38 |  | Совещание 11 | 1h | 2024-05-15 09:00 | 2024-05-15 10:00 |  |  |  | start no earlier than 2024-05-15 09:00 |
| 39 |  | Совещание 12 | 1h | 2024-05-22 09:00 | 2024-05-22 10:00 |  |  |  | start no earlier than 2024-05-22 09:00 |
| 40 |  | Совещание 13 | 1h | 2024-05-29 09:00 | 2024-05-29 10:00 |  |  |  | start no earlier than 2024-05-29 09:00 |
| 41 |  | Совещание 14 | 1h | 2024-06-05 09:00 | 2024-06-05 10:00 |  |  |  | start no earlier than 2024-06-05 09:00 |
| 42 |  | Совещание 16 | 1h | 2024-06-19 09:00 | 2024-06-19 10:00 |  |  |  | start no earlier than 2024-06-19 09:00 |
| 43 |  | Совещание 17 | 1h | 2024-06-26 09:00 | 2024-06-26 10:00 |  |  |  | start no earlier than 2024-06-26 09:00 |
| 44 |  | Совещание 18 | 1h | 2024-07-03 09:00 | 2024-07-03 10:00 |  |  |  | start no earlier than 2024-07-03 09:00 |
| 45 |  | Совещание 19 | 1h | 2024-07-10 09:00 | 2024-07-10 10:00 |  |  |  | start no earlier than 2024-07-10 09:00 |
| 46 |  | Совещание 20 | 1h | 2024-07-17 09:00 | 2024-07-17 10:00 |  |  |  | start no earlier than 2024-07-17 09:00 |
| 47 |  | Совещание 21 | 1h | 2024-07-24 09:00 | 2024-07-24 10:00 |  |  |  | start no earlier than 2024-07-24 09:00 |

## Version 2 (data date 2024-05-08, saved 2024-03-18, file task_02.mpp)

Last finish stays 2024-07-26. Complete tasks 1 → 2.

Changed:

| ID | Task | Start | Finish | Duration | Complete | Total float |
| --- | --- | --- | --- | --- | --- | --- |
| 2 | **Создание интерфейса** |  |  |  | 38% → 60% |  |
| 3 | **Разработка дизайна интерфейса** |  | 2024-04-08 15:00 → 2024-04-10 13:00 (+2d) | 25.62d → 27.5d | 43% → 67% | 42.03d → 9.12d |
| 5 | Разработка 3D графических элементов | 2024-03-01 09:00 A | 2024-03-18 11:00 → 2024-03-20 11:00 A (+2d) | 2w → 2.4w | 0% → 100% | 42.03d → none |
| 6 | Создание заставки | 2024-03-18 11:00 → 2024-03-20 11:00 (+2d) | 2024-04-08 15:00 → 2024-04-10 13:00 (+2d) |  |  | 42.03d → 9.12d |
| 17 | Создание мультимедиа - наполнения | 2024-04-08 15:00 → 2024-04-10 14:00 A (+2d) | 2024-05-28 11:00 → 2024-05-30 10:00 (+2d) |  | 0% → 30% | 42.03d → 40.16d |

## Version 3 (data date 2024-05-08, saved 2024-03-18, file task_03.mpp)

Last finish 2024-07-26 → 2024-07-24 (-2d). Complete tasks 2 → 18.

Changed:

| ID | Task | Start | Finish | Duration | Complete | Total float | Other |
| --- | --- | --- | --- | --- | --- | --- | --- |
| 1 | Начало проекта | 2024-03-01 09:00 A | 2024-03-01 09:00 A |  | 0% → 100% | 0d → none |  |
| 2 | **Создание интерфейса** |  | 2024-06-27 16:15 → 2024-06-21 11:59 (-6d) | 77.78d → 73.37d | 60% → 88% | 0d → 3.84d |  |
| 3 | **Разработка дизайна интерфейса** |  | 2024-04-10 13:00 A |  | 67% → 100% | 9.12d → none |  |
| 6 | Создание заставки | 2024-03-20 11:00 A | 2024-04-10 13:00 A |  | 0% → 100% | 9.12d → none |  |
| 7 | Программирование интерфейса | 2024-06-19 16:15 → 2024-06-13 11:59 (-6d) | 2024-06-27 16:15 → 2024-06-21 11:59 (-6d) |  |  | 0d → 3.84d |  |
| 8 | **Построение базы объектов** | 2024-03-01 09:00 A |  |  | 0% → 50% | 15.53d → 13.38d |  |
| 9 | Анализ и построение структуры базы объектов | 2024-03-01 09:00 A | 2024-03-26 16:00 A |  | 0% → 100% | 15.53d → none |  |
| 10 | Программирование средств обработки базы объектов | 2024-03-26 16:00 A | 2024-04-03 16:00 A |  | 0% → 100% | 15.53d → none | resources Программист#3; Программист#4; Программист#2; Программист-стажер; Программист#1 → Программист#3; Программист#4; Программист#2; Программист-стажер; Программист#1; Ведущий программист; Devops-стажер |
| 11 | Наполнение базы объектов | 2024-04-03 16:00 A |  |  | 0% → 37% | 15.53d → 13.38d |  |
| 12 | **Создание ядра GIS** | 2024-03-01 09:00 A | 2024-06-19 16:15 → 2024-06-13 11:59 (-6d) | 71.78d → 67.37d | 0% → 63% | 0d → 3.84d |  |
| 13 | Анализ и проектирование ядра | 2024-03-01 09:00 A | 2024-04-18 11:00 A |  | 0% → 100% | 0d → none | resources Ведущий программист; Системный аналитик → Ведущий программист; Системный аналитик; Devops-стажер |
| 14 | Создание модели ядра | 2024-04-18 11:00 A | 2024-05-03 15:12 → 2024-05-02 12:32 A (-1d) | 1.68w → 1.44w | 0% → 100% | 0d → none | resources Ведущий программист; Программист#1; Программист#2; Программист#3; Программист#4; Программист-стажер → Ведущий программист; Программист#1; Программист#2; Программист#3; Программист#4; Программист-стажер; Devops-стажер |
| 15 | Тестирование модели ядра | 2024-05-03 15:12 A | 2024-05-06 15:12 A |  | 0% → 100% | 0d → none | resources Программист#1; Программист-стажер; Программист#2; Программист#3; Программист#4 → Программист#1; Программист-стажер; Программист#2; Программист#3; Программист#4; Ведущий программист; Devops-стажер |
| 16 | Создание рабочей версии ядра | 2024-05-06 15:12 A | 2024-06-19 16:15 → 2024-06-13 11:59 (-6d) | 5.83w → 4.94w | 0% → 9% | 0d → 3.84d | resources Ведущий программист; Программист#1; Программист#2; Программист#3; Программист#4; Программист-стажер → Ведущий программист; Программист#1; Программист#2; Программист#3; Программист#4; Программист-стажер; Devops-стажер |
| 17 | Создание мультимедиа - наполнения |  | 2024-05-30 10:00 → 2024-05-30 15:00 |  | 30% → 57% | 40.16d → 37.5d | resources Мультимедиа-корреспондент → Мультимедиа-корреспондент; Специализированное ПО |
| 18 | Создание справочной системы | 2024-07-09 10:15 → 2024-07-02 15:59 (-7d) | 2024-07-23 11:15 → 2024-07-16 16:59 (-7d) |  |  | 3d → 5.25d |  |
| 19 | **Создание руководства пользователя** | 2024-06-13 16:15 → 2024-06-06 11:59 (-7d) | 2024-07-09 09:15 → 2024-07-02 14:59 (-7d) |  |  | 0d → 3.84d |  |
| 20 | Разработка дизайна руководства | 2024-06-13 16:15 → 2024-06-06 11:59 (-7d) | 2024-06-20 16:15 → 2024-06-14 11:59 (-6d) |  |  | 0d → 3.84d |  |
| 21 | Написание руководства пользователя | 2024-06-17 16:15 → 2024-06-10 11:59 (-7d) | 2024-07-09 09:15 → 2024-07-02 14:59 (-7d) |  |  | 0d → 3.84d |  |
| 22 | **Создание web - сайта и поддержка** | 2024-06-17 16:15 → 2024-06-10 11:59 (-7d) | 2024-07-19 10:15 → 2024-07-12 14:59 (-7d) | 23.38d → 23.25d |  | 0d → 3.84d |  |
| 23 | Разработка структуры сайта | 2024-06-17 16:15 → 2024-06-10 11:59 (-7d) | 2024-06-18 16:15 → 2024-06-11 11:59 (-7d) |  |  | 0d → 3.84d |  |
| 24 | Разработка дизайна сайта | 2024-06-18 16:15 → 2024-06-11 11:59 (-7d) | 2024-06-27 17:15 → 2024-06-21 11:59 (-6d) | 1.43w → 1.4w |  | 0d → 3.84d |  |
| 25 | Наполнение сайта | 2024-06-27 17:15 → 2024-06-21 11:59 (-6d) | 2024-07-19 10:15 → 2024-07-12 14:59 (-7d) |  |  | 0d → 3.84d |  |
| 26 | Тестирование сайта | 2024-07-12 10:15 → 2024-07-05 14:59 (-7d) | 2024-07-26 11:14 → 2024-07-18 11:17 (-8d) | 2.02w → 1.73w |  | 0d → 3.84d | resources Ведущий программист; Программист#1; Программист#2; Программист#3; Программист#4; Программист-стажер → Ведущий программист; Программист#1; Программист#2; Программист#3; Программист#4; Программист-стажер; Devops-стажер |
| 27 | Сдача сайта в эксплуатацию | 2024-07-26 11:14 → 2024-07-18 11:17 (-8d) | 2024-07-26 11:14 → 2024-07-18 11:17 (-8d) |  |  | 0d → 3.84d |  |
| 28 | **Совещание** | 2024-03-06 09:00 A |  |  | 0% → 47% |  |  |
| 29 | Совещание 1 | 2024-03-06 09:00 A | 2024-03-06 10:00 A |  | 0% → 100% |  |  |
| 30 | Совещание 2 | 2024-03-13 09:00 A | 2024-03-13 10:00 A |  | 0% → 100% | 91.16d → none |  |
| 31 | Совещание 3 | 2024-03-20 09:00 A | 2024-03-20 10:00 A |  | 0% → 100% |  |  |
| 32 | Совещание 4 | 2024-03-27 09:00 A | 2024-03-27 10:00 A |  | 0% → 100% |  |  |
| 33 | Совещание 5 | 2024-04-03 09:00 A | 2024-04-03 10:00 A |  | 0% → 100% |  |  |
| 34 | Совещание 6 | 2024-04-10 09:00 A | 2024-04-10 10:00 A |  | 0% → 100% |  |  |
| 35 | Совещание 7 | 2024-04-17 09:00 A | 2024-04-17 10:00 A |  | 0% → 100% |  |  |
| 36 | Совещание 8 | 2024-04-24 09:00 A | 2024-04-24 10:00 A |  | 0% → 100% |  |  |
| 37 | Совещание 10 | 2024-05-08 09:00 A | 2024-05-08 10:00 A |  | 0% → 100% |  |  |

## Version 4 (data date 2024-05-08, saved 2024-03-24, file optimisation.mpp)

Last finish stays 2024-07-24.

Changed:

| ID | Task | Start | Finish | Duration | Complete | Total float | Other |
| --- | --- | --- | --- | --- | --- | --- | --- |
| 2 | **Создание интерфейса** |  | 2024-06-21 11:59 → 2024-06-20 11:59 (-1d) | 73.37d → 72.37d | 88% → 90% | 3.84d → 4.84d |  |
| 7 | Программирование интерфейса |  | 2024-06-21 11:59 → 2024-06-20 11:59 (-1d) | 1.2w → 1w |  | 3.84d → 4.84d | resources Программист#3; Программист#4; Программист#1; Программист#2; Программист-стажер → Программист#3; Программист#4; Программист#1; Программист#2; Программист-стажер; Программист-стажер 2 |
| 8 | **Построение базы объектов** |  | 2024-07-04 16:00 → 2024-06-26 12:40 (-8d) | 82.75d → 76.46d | 50% → 55% | 13.38d → 19.67d |  |
| 10 | Программирование средств обработки базы объектов |  |  |  |  |  | resources Программист#3; Программист#4; Программист#2; Программист-стажер; Программист#1; Ведущий программист; Devops-стажер → Программист#3; Программист#4; Программист#2; Программист-стажер; Программист#1; Ведущий программист; Программист-стажер 2 |
| 11 | Наполнение базы объектов |  | 2024-07-04 16:00 → 2024-06-26 12:40 (-8d) | 12w → 10.74w | 37% → 41% | 13.38d → 19.67d | resources Наборщик данных#1; Наборщик данных#2; Наборщик данных#3; Наборщик данных#4; Наборщик данных#5 → Наборщик данных#1; Наборщик данных#2; Наборщик данных#3; Наборщик данных#4; Наборщик данных#5; Наборщик данных#6 |
| 12 | **Создание ядра GIS** |  |  |  | 63% → 57% | 3.84d → 4.84d |  |
| 13 | Анализ и проектирование ядра |  | 2024-04-18 11:00 A → 2024-04-03 17:26 A (-15d) | 5.35w → 3.74w |  |  | resources Ведущий программист; Системный аналитик; Devops-стажер → Ведущий программист; Системный аналитик; Программист-стажер 2 |
| 14 | Создание модели ядра |  |  |  |  |  | resources Ведущий программист; Программист#1; Программист#2; Программист#3; Программист#4; Программист-стажер; Devops-стажер → Ведущий программист; Программист#1; Программист#2; Программист#3; Программист#4; Программист-стажер; Программист-стажер 2 |
| 15 | Тестирование модели ядра |  |  |  |  |  | resources Программист#1; Программист-стажер; Программист#2; Программист#3; Программист#4; Ведущий программист; Devops-стажер → Программист#1; Программист-стажер; Программист#2; Программист#3; Программист#4; Ведущий программист; Программист-стажер 2 |
| 16 | Создание рабочей версии ядра |  |  |  |  | 3.84d → 4.84d | resources Ведущий программист; Программист#1; Программист#2; Программист#3; Программист#4; Программист-стажер; Devops-стажер → Ведущий программист; Программист#1; Программист#2; Программист#3; Программист#4; Программист-стажер; Программист-стажер 2 |
| 18 | Создание справочной системы | 2024-07-02 15:59 → 2024-07-01 15:59 (-1d) | 2024-07-16 16:59 → 2024-07-15 16:59 (-1d) |  |  | 5.25d → 6.25d |  |
| 19 | **Создание руководства пользователя** | 2024-06-06 11:59 → 2024-06-05 11:59 (-1d) | 2024-07-02 14:59 → 2024-07-01 14:59 (-1d) |  |  | 3.84d → 4.84d |  |
| 20 | Разработка дизайна руководства | 2024-06-06 11:59 → 2024-06-05 11:59 (-1d) | 2024-06-14 11:59 → 2024-06-13 11:59 (-1d) |  |  | 3.84d → 4.84d |  |
| 21 | Написание руководства пользователя | 2024-06-10 11:59 → 2024-06-07 11:59 (-3d) | 2024-07-02 14:59 → 2024-07-01 14:59 (-1d) |  |  | 3.84d → 4.84d |  |
| 22 | **Создание web - сайта и поддержка** | 2024-06-10 11:59 → 2024-06-07 11:59 (-3d) | 2024-07-12 14:59 → 2024-07-11 14:59 (-1d) |  |  | 3.84d → 4.84d |  |
| 23 | Разработка структуры сайта | 2024-06-10 11:59 → 2024-06-07 11:59 (-3d) | 2024-06-11 11:59 → 2024-06-10 11:59 (-1d) |  |  | 3.84d → 4.84d |  |
| 24 | Разработка дизайна сайта | 2024-06-11 11:59 → 2024-06-10 11:59 (-1d) | 2024-06-21 11:59 → 2024-06-20 11:59 (-1d) |  |  | 3.84d → 4.84d |  |
| 25 | Наполнение сайта | 2024-06-21 11:59 → 2024-06-20 11:59 (-1d) | 2024-07-12 14:59 → 2024-07-11 14:59 (-1d) |  |  | 3.84d → 4.84d |  |
| 26 | Тестирование сайта | 2024-07-05 14:59 → 2024-07-04 14:59 (-1d) | 2024-07-18 11:17 → 2024-07-17 11:17 (-1d) |  |  | 3.84d → 4.84d | resources Ведущий программист; Программист#1; Программист#2; Программист#3; Программист#4; Программист-стажер; Devops-стажер → Ведущий программист; Программист#1; Программист#2; Программист#3; Программист#4; Программист-стажер; Программист-стажер 2 |
| 27 | Сдача сайта в эксплуатацию | 2024-07-18 11:17 → 2024-07-17 11:17 (-1d) | 2024-07-18 11:17 → 2024-07-17 11:17 (-1d) |  |  | 3.84d → 4.84d |  |
